How a schedule from an exported table changed from version to version. A marks actual dates.

## Version 1 (saved 2022-10-04)

Note of the change: gantt 1 iteration prototype

| Task | Start | Finish |
| --- | --- | --- |
| Planning | 2022-09-19T01:00:00.000Z | 2022-10-07T10:00:00.000Z |
| Analysis: Master | 2022-09-19T01:00:00.000Z | 2022-10-07T10:00:00.000Z |
| Analysis: Player | 2022-09-19T01:00:00.000Z | 2022-10-07T10:00:00.000Z |
| Analysis: Features | 2022-09-19T01:00:00.000Z | 2022-10-07T10:00:00.000Z |
| Analysis: Equipment | 2022-09-19T01:00:00.000Z | 2022-10-07T10:00:00.000Z |
| Iteration 1: System | 2022-10-10T01:00:00.000Z | 2022-11-01T10:00:00.000Z |
| Definition of Entities & API | 2022-10-10T01:00:00.000Z | 2022-10-18T10:00:00.000Z |
| Mockup UI impl | 2022-10-13T01:00:00.000Z | 2022-10-18T10:00:00.000Z |
| System UI Mockups | 2022-10-10T01:00:00.000Z | 2022-10-12T10:00:00.000Z |
| Mockup api calls impl | 2022-10-19T01:00:00.000Z | 2022-10-27T10:00:00.000Z |
| App & server integration | 2022-10-28T01:00:00.000Z | 2022-11-01T10:00:00.000Z |
| Integration tests | 2022-10-28T01:00:00.000Z | 2022-11-01T10:00:00.000Z |
| Test environment provision | 2022-10-10T01:00:00.000Z | 2022-10-11T10:00:00.000Z |
| Echo server impl | 2022-10-12T01:00:00.000Z | 2022-10-13T10:00:00.000Z |
| Server api impl | 2022-10-19T01:00:00.000Z | 2022-10-27T10:00:00.000Z |
| Risk analysis | 2022-10-19T01:00:00.000Z | 2022-10-21T10:00:00.000Z |

## Version 2 (saved 2022-10-15)

Note of the change: first iteration of full gantt

Last finish 2022-11-01 → 2022-12-28 (+57d).

Added:

| Task | Start | Finish |
| --- | --- | --- |
| Описание API & Entities: Система | 2022-10-08T01:00:00.000Z | 2022-10-16T10:00:00.000Z |
| Проектирование мокапов для управления системами | 2022-10-08T01:00:00.000Z | 2022-10-13T10:00:00.000Z |
| Мокапы: основное активити | 2022-10-14T01:00:00.000Z | 2022-10-21T10:00:00.000Z |
| Мокапы: управление предметами | 2022-10-14T01:00:00.000Z | 2022-10-21T10:00:00.000Z |
| Мокапы: управление параметрами | 2022-10-14T01:00:00.000Z | 2022-10-21T10:00:00.000Z |
| Мокапы: управление тегами и свойствами | 2022-10-14T01:00:00.000Z | 2022-10-21T10:00:00.000Z |
| Callbacks: основное активити | 2022-10-24T01:00:00.000Z | 2022-10-31T10:00:00.000Z |
| Callbacks: управление предметами | 2022-10-24T01:00:00.000Z | 2022-10-31T10:00:00.000Z |
| Callbacks: управление параметрами | 2022-10-24T01:00:00.000Z | 2022-10-31T10:00:00.000Z |
| Callbacks: управление тегами и свойствами | 2022-10-24T01:00:00.000Z | 2022-10-31T10:00:00.000Z |
| Интеграция сервера: система | 2022-11-03T01:00:00.000Z | 2022-11-06T10:00:00.000Z |
| Интеграция фронта: система | 2022-11-03T01:00:00.000Z | 2022-11-06T10:00:00.000Z |
| Интеграция: тестирование | 2022-12-13T01:00:00.000Z | 2022-12-19T10:00:00.000Z |
| Предоставление тестового окружения | 2022-10-06T01:00:00.000Z | 2022-10-12T10:00:00.000Z |
| Базовый сервер | 2022-10-13T01:00:00.000Z | 2022-10-15T10:00:00.000Z |
| Server: предметы и теги | 2022-10-19T01:00:00.000Z | 2022-10-27T10:00:00.000Z |
| Server: системы и параметры | 2022-10-19T01:00:00.000Z | 2022-10-27T10:00:00.000Z |
| Iteration 2: Player, Equipment, Account, Search | 2022-10-27T01:00:00.000Z | 2022-12-28T01:00:00.000Z |
| Описание API и Entities: Игрок | 2022-10-27T01:00:00.000Z | 2022-11-04T10:00:00.000Z |
| Доанализ требований: Игрок | 2022-10-27T01:00:00.000Z | 2022-11-04T10:00:00.000Z |
| Проектирование мокапов для управления персонажем | 2022-11-03T01:00:00.000Z | 2022-11-08T10:00:00.000Z |
| Мокапы: персонаж | 2022-11-11T01:00:00.000Z | 2022-11-15T10:00:00.000Z |
| Мокапы: снаряжение | 2022-11-11T01:00:00.000Z | 2022-11-15T10:00:00.000Z |
| Мокапы: аккаунт | 2022-11-11T01:00:00.000Z | 2022-11-15T10:00:00.000Z |
| Callbacks: персонаж | 2022-11-17T01:00:00.000Z | 2022-11-22T10:00:00.000Z |
| Callbacks: снаряжение | 2022-11-17T01:00:00.000Z | 2022-11-22T10:00:00.000Z |
| Calbacks: аккаунт | 2022-11-17T01:00:00.000Z | 2022-11-22T10:00:00.000Z |
| Интеграция сервера: игрок | 2022-11-25T01:00:00.000Z | 2022-11-28T10:00:00.000Z |
| Интеграция фронта: игрок | 2022-11-25T01:00:00.000Z | 2022-11-28T10:00:00.000Z |
| Server: Игрок и снаряжение | 2022-11-05T01:00:00.000Z | 2022-11-18T10:00:00.000Z |
| Server: аккаунт и поиск | 2022-11-05T01:00:00.000Z | 2022-11-18T10:00:00.000Z |
| Iteration 3: Minor requirements | 2022-11-15T01:00:00.000Z | 2022-12-28T01:00:00.000Z |
| Доанализ и отбор требований | 2022-11-15T01:00:00.000Z | 2022-11-21T10:00:00.000Z |
| Описание API & Entities: все остальное | 2022-11-23T01:00:00.000Z | 2022-11-29T10:00:00.000Z |
| Проектирование мокапов: все остальное | 2022-11-23T01:00:00.000Z | 2022-11-29T10:00:00.000Z |
| Мокапы: 1 | 2022-12-01T01:00:00.000Z | 2022-12-05T10:00:00.000Z |
| Мокапы: 2 | 2022-12-01T01:00:00.000Z | 2022-12-05T10:00:00.000Z |
| Мокапы: 3 | 2022-12-01T01:00:00.000Z | 2022-12-05T10:00:00.000Z |
| Мокапы: 4 | 2022-12-01T01:00:00.000Z | 2022-12-05T10:00:00.000Z |
| Callbacks: 1 | 2022-12-06T01:00:00.000Z | 2022-12-12T10:00:00.000Z |
| Callbacks: 2 | 2022-12-06T01:00:00.000Z | 2022-12-12T10:00:00.000Z |
| Callbacks: 3 | 2022-12-06T01:00:00.000Z | 2022-12-12T10:00:00.000Z |
| Callbacks: 4 | 2022-12-06T01:00:00.000Z | 2022-12-12T10:00:00.000Z |
| Интеграция сервера: все остальное | 2022-12-13T01:00:00.000Z | 2022-12-19T10:00:00.000Z |
| Интеграция клиента: все остальное | 2022-12-13T01:00:00.000Z | 2022-12-19T10:00:00.000Z |
| Server: 1 | 2022-11-30T01:00:00.000Z | 2022-12-11T10:00:00.000Z |
| Server: 2 | 2022-11-30T01:00:00.000Z | 2022-12-11T10:00:00.000Z |
| Deadline | 2022-12-28T01:00:00.000Z | 2022-12-28T01:00:00.000Z |

Removed: Definition of Entities & API; Mockup UI impl; System UI Mockups; Mockup api calls impl; App & server integration; Integration tests; Test environment provision; Echo server impl; Server api impl; Risk analysis

Changed:

| Task | Start | Finish |
| --- | --- | --- |
| Planning |  | 2022-10-07T10:00:00.000Z → 2022-10-03T10:00:00.000Z (-4d) |
| Analysis: Master |  | 2022-10-07T10:00:00.000Z → 2022-10-03T10:00:00.000Z (-4d) |
| Analysis: Player |  | 2022-10-07T10:00:00.000Z → 2022-10-03T10:00:00.000Z (-4d) |
| Analysis: Features |  | 2022-10-07T10:00:00.000Z → 2022-10-03T10:00:00.000Z (-4d) |
| Analysis: Equipment |  | 2022-10-07T10:00:00.000Z → 2022-10-03T10:00:00.000Z (-4d) |
| Iteration 1: System | 2022-10-10T01:00:00.000Z → 2022-10-06T01:00:00.000Z (-4d) | 2022-11-01T10:00:00.000Z → 2022-11-06T10:00:00.000Z (+5d) |

## Version 3 (saved 2022-10-15)

Note of the change: designer freed up

Last finish stays 2022-12-28.

Added:

| Task | Start | Finish |
| --- | --- | --- |
| Мокапы: управление предметами тегами | 2022-10-14T01:00:00.000Z | 2022-10-21T10:00:00.000Z |
| Мокапы: управление параметрами и свойствами | 2022-10-14T01:00:00.000Z | 2022-10-21T10:00:00.000Z |
| Callbacks: управление предметами и тегами | 2022-10-24T01:00:00.000Z | 2022-10-31T10:00:00.000Z |
| Callbacks: управление параметрами и свойствами | 2022-10-24T01:00:00.000Z | 2022-10-31T10:00:00.000Z |

Removed: Мокапы: управление предметами; Мокапы: управление параметрами; Мокапы: управление тегами и свойствами; Callbacks: управление предметами; Callbacks: управление параметрами; Callbacks: управление тегами и свойствами

## Version 4 (saved 2022-10-25)

Note of the change: shift-right-1

Last finish stays 2022-12-28.

Changed:

| Task | Start | Finish |
| --- | --- | --- |
| Iteration 1: System |  | 2022-11-06T10:00:00.000Z → 2022-11-12T10:00:00.000Z (+6d) |
| Мокапы: управление предметами тегами |  | 2022-10-21T10:00:00.000Z → 2022-10-27T10:00:00.000Z (+6d) |
| Мокапы: управление параметрами и свойствами |  | 2022-10-21T10:00:00.000Z → 2022-10-27T10:00:00.000Z (+6d) |
| Callbacks: управление предметами и тегами | 2022-10-24T01:00:00.000Z → 2022-10-30T01:00:00.000Z (+6d) | 2022-10-31T10:00:00.000Z → 2022-11-06T10:00:00.000Z (+6d) |
| Callbacks: управление параметрами и свойствами | 2022-10-24T01:00:00.000Z → 2022-10-30T01:00:00.000Z (+6d) | 2022-10-31T10:00:00.000Z → 2022-11-06T10:00:00.000Z (+6d) |
| Интеграция сервера: система | 2022-11-03T01:00:00.000Z → 2022-11-09T01:00:00.000Z (+6d) | 2022-11-06T10:00:00.000Z → 2022-11-12T10:00:00.000Z (+6d) |
| Интеграция фронта: система | 2022-11-03T01:00:00.000Z → 2022-11-09T01:00:00.000Z (+6d) | 2022-11-06T10:00:00.000Z → 2022-11-12T10:00:00.000Z (+6d) |
| Server: предметы и теги |  | 2022-10-27T10:00:00.000Z → 2022-11-05T10:00:00.000Z (+9d) |
| Server: системы и параметры |  | 2022-10-27T10:00:00.000Z → 2022-11-05T10:00:00.000Z (+9d) |
| Мокапы: персонаж | 2022-11-11T01:00:00.000Z → 2022-11-13T01:00:00.000Z (+2d) | 2022-11-15T10:00:00.000Z → 2022-11-17T10:00:00.000Z (+2d) |
| Мокапы: снаряжение | 2022-11-11T01:00:00.000Z → 2022-11-13T01:00:00.000Z (+2d) | 2022-11-15T10:00:00.000Z → 2022-11-17T10:00:00.000Z (+2d) |
| Мокапы: аккаунт | 2022-11-11T01:00:00.000Z → 2022-11-13T01:00:00.000Z (+2d) | 2022-11-15T10:00:00.000Z → 2022-11-17T10:00:00.000Z (+2d) |
| Callbacks: персонаж | 2022-11-17T01:00:00.000Z → 2022-11-19T01:00:00.000Z (+2d) | 2022-11-22T10:00:00.000Z → 2022-11-24T10:00:00.000Z (+2d) |
| Callbacks: снаряжение | 2022-11-17T01:00:00.000Z → 2022-11-19T01:00:00.000Z (+2d) | 2022-11-22T10:00:00.000Z → 2022-11-24T10:00:00.000Z (+2d) |
| Calbacks: аккаунт | 2022-11-17T01:00:00.000Z → 2022-11-19T01:00:00.000Z (+2d) | 2022-11-22T10:00:00.000Z → 2022-11-24T10:00:00.000Z (+2d) |
| Интеграция сервера: игрок | 2022-11-25T01:00:00.000Z → 2022-11-27T01:00:00.000Z (+2d) | 2022-11-28T10:00:00.000Z → 2022-11-30T10:00:00.000Z (+2d) |
| Интеграция фронта: игрок | 2022-11-25T01:00:00.000Z → 2022-11-27T01:00:00.000Z (+2d) | 2022-11-28T10:00:00.000Z → 2022-11-30T10:00:00.000Z (+2d) |

## Version 5 (saved 2022-11-10)

Note of the change: integration update

Last finish stays 2022-12-28.

Changed:

| Task | Start | Finish |
| --- | --- | --- |
| Описание API и Entities: Игрок | 2022-10-27T01:00:00.000Z → 2022-10-31T01:00:00.000Z (+4d) | 2022-11-04T10:00:00.000Z → 2022-11-12T10:00:00.000Z (+8d) |
| Доанализ требований: Игрок |  | 2022-11-04T10:00:00.000Z → 2022-11-12T10:00:00.000Z (+8d) |
| Проектирование мокапов для управления персонажем | 2022-11-03T01:00:00.000Z → 2022-10-29T01:00:00.000Z (-5d) | 2022-11-08T10:00:00.000Z → 2022-11-06T10:00:00.000Z (-2d) |
| Мокапы: персонаж |  | 2022-11-17T10:00:00.000Z → 2022-11-19T10:00:00.000Z (+2d) |
| Мокапы: снаряжение |  | 2022-11-17T10:00:00.000Z → 2022-11-19T10:00:00.000Z (+2d) |
| Мокапы: аккаунт |  | 2022-11-17T10:00:00.000Z → 2022-11-19T10:00:00.000Z (+2d) |
| Callbacks: персонаж | 2022-11-19T01:00:00.000Z → 2022-11-21T01:00:00.000Z (+2d) |  |
| Callbacks: снаряжение | 2022-11-19T01:00:00.000Z → 2022-11-21T01:00:00.000Z (+2d) |  |
| Calbacks: аккаунт | 2022-11-19T01:00:00.000Z → 2022-11-21T01:00:00.000Z (+2d) |  |
| Server: Игрок и снаряжение | 2022-11-05T01:00:00.000Z → 2022-11-13T01:00:00.000Z (+8d) | 2022-11-18T10:00:00.000Z → 2022-11-26T10:00:00.000Z (+8d) |
| Server: аккаунт и поиск | 2022-11-05T01:00:00.000Z → 2022-11-13T01:00:00.000Z (+8d) | 2022-11-18T10:00:00.000Z → 2022-11-26T10:00:00.000Z (+8d) |

## Version 6 (saved 2022-11-11)

Note of the change: test strategy task

Last finish stays 2022-12-28.

Added:

| Task | Start | Finish |
| --- | --- | --- |
| Описание стратегии тестирования | 2022-11-13T01:00:00.000Z | 2022-11-26T10:00:00.000Z |

## Version 7 (saved 2022-12-04)

Note of the change: 3 iteration update

Last finish stays 2022-12-28.

Added:

| Task | Start | Finish |
| --- | --- | --- |
| Iteration 3: Minor requirements [CANCELLED] | 2022-11-15T01:00:00.000Z | 2022-12-28T01:00:00.000Z |
| Iteration 3.0: Stabilisation | 2022-12-02T01:00:00.000Z | 2022-12-26T10:00:00.000Z |
| Настройка запускаемости приложения | 2022-12-02T01:00:00.000Z | 2022-12-04T10:00:00.000Z |
| Стабилизация: исправления | 2022-12-05T01:00:00.000Z | 2022-12-26T10:00:00.000Z |
| Стабилизация: функциональное тестирование | 2022-12-05T01:00:00.000Z | 2022-12-26T10:00:00.000Z |
| Подготовка тестовых данных | 2022-12-05T01:00:00.000Z | 2022-12-06T10:00:00.000Z |
| Стабилизация: тестирование ui/ux | 2022-12-05T01:00:00.000Z | 2022-12-26T10:00:00.000Z |
| Стабилизация: тестирование сервера | 2022-12-05T01:00:00.000Z | 2022-12-26T10:00:00.000Z |

Removed: Iteration 3: Minor requirements

Changed:

| Task | Start | Finish |
| --- | --- | --- |
| Мокапы: персонаж |  | 2022-11-19T10:00:00.000Z → 2022-12-01T10:00:00.000Z (+12d) |
| Мокапы: снаряжение |  | 2022-11-19T10:00:00.000Z → 2022-12-01T10:00:00.000Z (+12d) |
| Мокапы: аккаунт |  | 2022-11-19T10:00:00.000Z → 2022-12-01T10:00:00.000Z (+12d) |
| Callbacks: персонаж | 2022-11-21T01:00:00.000Z → 2022-11-24T01:00:00.000Z (+3d) | 2022-11-24T10:00:00.000Z → 2022-12-01T10:00:00.000Z (+7d) |
| Callbacks: снаряжение | 2022-11-21T01:00:00.000Z → 2022-11-24T01:00:00.000Z (+3d) | 2022-11-24T10:00:00.000Z → 2022-12-01T10:00:00.000Z (+7d) |
| Calbacks: аккаунт | 2022-11-21T01:00:00.000Z → 2022-11-24T01:00:00.000Z (+3d) | 2022-11-24T10:00:00.000Z → 2022-12-01T10:00:00.000Z (+7d) |
| Интеграция сервера: игрок | 2022-11-27T01:00:00.000Z → 2022-12-04T01:00:00.000Z (+7d) | 2022-11-30T10:00:00.000Z → 2022-12-07T10:00:00.000Z (+7d) |
| Интеграция фронта: игрок | 2022-11-27T01:00:00.000Z → 2022-12-04T01:00:00.000Z (+7d) | 2022-11-30T10:00:00.000Z → 2022-12-07T10:00:00.000Z (+7d) |
